# Cronograma [Rossi Itajubá] FINALIZADO

How a schedule from MS Project changed from version to version. A marks actual dates.

## Version 1 (saved 2018-11-09, file MC - Cronograma_00.mpp)

Note of the change: 1.0 inicio

| ID | WBS | Task | Duration | Start | Finish | Predecessors | Complete | Constraint |
| --- | --- | --- | --- | --- | --- | --- | --- | --- |
| 1 | 1 | **Projeto - Match de Currículos** | 282.38d | 2018-09-03 09:00 | 2019-10-02 12:00 |  | 100% |  |
| 2 | 1.1 | **Prospecção** | 11d | 2018-09-03 09:00 | 2018-09-17 18:00 |  | 100% |  |
| 3 | 1.1.1 | **PTEC -Proposta Técnica** | 2d | 2018-09-10 09:00 A | 2018-09-11 18:00 |  | 100% |  |
| 4 |  | Redigir PTEC | 0.25d | 2018-09-10 09:00 A | 2018-09-10 11:00 A |  | 100% |  |
| 5 |  | Revisar PTEC | 0.12d | 2018-09-11 09:00 A | 2018-09-11 10:00 A | 4 | 100% |  |
| 6 | 1.1.2 | **ETP - Estimativa de Tamanho Preliminar** | 3d | 2018-09-13 09:00 A | 2018-09-17 18:00 |  | 100% |  |
| 7 |  | Elaborar ETP | 0.25d | 2018-09-13 09:00 A | 2018-09-13 11:00 A | 5 | 100% |  |
| 8 |  | Revisar ETP | 0.12d | 2018-09-16 09:00 A | 2018-09-17 09:00 A | 7 | 100% |  |
| 9 | 1.1.3 | **CRP e ORP - Cronograma e Orçamento Preliminares** | 1d | 2018-09-17 09:00 A | 2018-09-17 18:00 |  | 100% |  |
| 10 |  | Elaborar CRP e ORP | 0.25d | 2018-09-17 09:00 A | 2018-09-17 11:00 A | 8 | 100% |  |
| 11 |  | Revisar CRP e ORP | 0.12d | 2018-09-17 09:00 A | 2018-09-17 10:00 A | 10 | 100% |  |
| 12 | 1.1.4 | **Aprovações - Prospecção** | 0.12d | 2018-09-17 09:00 A | 2018-09-17 10:00 A |  | 100% |  |
| 13 |  | Aprovar PTEC | 0.12d | 2018-09-17 09:00 A | 2018-09-17 10:00 A | 5 | 100% |  |
| 14 |  | Aprovar ETP | 0.12d | 2018-09-17 09:00 A | 2018-09-17 10:00 A | 8 | 100% | finish no earlier than 2017-08-15 18:00 |
| 15 |  | Aprovar CRP e ORP | 0.12d | 2018-09-17 09:00 A | 2018-09-17 10:00 A | 11 | 100% | finish no earlier than 2017-08-16 18:00 |
| 16 | 1.2 | **Planejamento** | 8d | 2018-09-18 09:00 | 2018-09-27 18:00 |  | 100% |  |
| 17 | 1.2.1 | **EAP** | 0.25d | 2018-09-18 09:00 A | 2018-09-18 11:00 A |  | 100% |  |
| 18 |  | Elaborar EAP | 0.25d | 2018-09-18 09:00 A | 2018-09-18 11:00 A | 15 | 100% |  |
| 19 |  | Revisar EAP | 0.12d | 2018-09-18 09:00 A | 2018-09-18 10:00 A | 18 | 100% |  |
| 20 | 1.2.2 | **Plano de Projeto** | 1.12d | 2018-09-19 09:00 | 2018-09-20 10:00 |  | 100% |  |
| 21 |  | Elaborar Plano de Projeto | 0.25d | 2018-09-17 09:00 A | 2018-09-17 11:00 A | 19 | 100% |  |
| 22 |  | Revisar Plano de Projeto | 0.12d | 2018-09-18 09:00 A | 2018-09-18 10:00 A | 21 | 100% |  |
| 23 | 1.2.3 | **ETD - Estimativa de Tamanho Definitiva** | 1.12d | 2018-09-19 09:00 A | 2018-09-20 10:00 A |  | 100% |  |
| 24 |  | Elaborar EDT | 0.25d | 2018-09-19 09:00 A | 2018-09-19 11:00 A | 22 | 100% |  |
| 25 |  | Revisar EDT | 0.12d | 2018-09-20 09:00 A | 2018-09-20 10:00 A | 24 | 100% |  |
| 26 | 1.2.4 | **CRD e ORD - Cronograma e Orçamento Definitivo** | 1.12d | 2018-09-21 09:00 A | 2018-09-24 10:00 A |  | 100% |  |
| 27 |  | Elaborar CRD e ORD | 0.5d | 2018-09-21 09:00 A | 2018-09-21 14:00 A | 25 | 100% |  |
| 28 |  | Revisar CRD e ORD | 0.12d | 2018-09-24 09:00 A | 2018-09-24 10:00 A | 27 | 100% |  |
| 29 | 1.2.5 | **Aprovações - Planejamento** | 2d | 2018-09-26 09:00 A | 2018-09-27 18:00 |  | 100% |  |
| 30 |  | Aprovar EAP | 0.12d | 2018-09-26 09:00 A | 2018-09-26 10:00 A | 28 | 100% |  |
| 31 |  | Aprovar Plano de Projeto | 0.12d | 2018-09-26 09:00 A | 2018-09-26 10:00 A | 30 | 100% |  |
| 32 |  | Aprovar ETD | 0.12d | 2018-09-27 09:00 A | 2018-09-27 10:00 A | 31 | 100% |  |
| 33 |  | Aprovar CRD e ORD | 0.12d | 2018-09-27 09:00 A | 2018-09-27 10:00 A | 32 | 100% |  |
| 34 | 1.3 | **Analise** | 5.11d? | 2018-09-28 09:00 A | 2018-10-05 09:52 A |  | 100% |  |
| 35 | 1.3.1 | **Documento de Requisitos** | 3.12d | 2018-09-28 09:00 A | 2018-10-03 10:00 A |  | 100% |  |
| 36 |  | Especificar Requisitos Funcionais do Sistema | 0.12d | 2018-09-28 09:00 A | 2018-09-28 10:00 A | 33 | 100% | start no earlier than 2018-09-28 09:00 |
| 37 |  | Elaborar DRE | 0.05d | 2018-10-02 09:00 A | 2018-10-02 09:24 A | 36 | 100% | start no earlier than 2018-10-02 09:00 |
| 38 |  | Realizar correções no DRE | 0.12d | 2018-10-03 09:00 A | 2018-10-03 10:00 A | 37 | 100% | start no earlier than 2018-10-03 09:00 |
| 39 | 1.3.2 | **Matriz de Rastreabilidade** | 0.11d? | 2018-10-05 09:00 A | 2018-10-05 09:52 A |  | 100% |  |
| 40 |  | Elaborar a Matriz | 0.08d | 2018-10-05 09:00 A | 2018-10-05 09:40 A | 38 | 100% | start no earlier than 2018-10-05 09:00 |
| 41 |  | Revistar a Matriz | 0.03d? | 2018-10-05 09:40 A | 2018-10-05 09:52 A | 40 | 100% | start no earlier than 2017-08-17 09:00 |
| 42 | 1.4 | **Release** | 60.12d | 2018-10-05 09:00 | 2018-12-28 10:00 |  | 100% |  |
| 43 | 1.4.1 | **Modelagem do Banco de Dados** | 9.31d | 2018-10-05 09:00 A | 2018-10-18 11:30 |  | 100% |  |
| 44 |  | Modelo E-R | 0.19d | 2018-10-05 09:00 A | 2018-10-08 09:00 A | 41 | 100% | finish no earlier than 2017-09-01 18:00 |
| 45 |  | Modelo Lógico | 0.19d | 2018-10-09 09:00 A | 2018-10-09 10:30 A | 44 | 100% | start no earlier than 2017-09-12 09:00 |
| 46 |  | Modelo Físico | 0.19d | 2018-10-10 09:00 A | 2018-10-10 10:30 A | 45 | 100% | start no earlier than 2017-09-13 09:00 |
| 47 |  | Revisar a modelagem do Banco de Dados | 0.19d | 2018-10-11 09:00 A | 2018-10-11 10:30 A | 46 | 100% | start no earlier than 2017-09-14 09:00 |
| 48 | 1.4.2 | **Implementação e Teste** | 37d | 2017-10-04 09:00 | 2017-11-23 18:00 |  | 100% |  |
| 49 | 1.4.2.1 | **Release 1** | 4d | 2017-10-16 09:00 A | 2017-10-20 09:00 |  | 100% |  |
| 50 |  | [RFS001] Cadastrar Pessoa | 0.75d? | 2017-10-16 09:00 A | 2017-10-16 16:00 A | 47 | 100% |  |
| 51 |  | [RFS002] Cadastrar Empresa | 0.25d? | 2017-10-16 09:00 A | 2017-10-16 11:00 A | 50 | 100% |  |
| 52 |  | [RFS008] Consultar Pessoa | 0.25d? | 2017-10-17 09:00 A | 2017-10-17 11:00 A | 51 | 100% |  |
| 53 |  | [RFS009] Consultar Empresa | 0.12d? | 2017-10-17 09:00 A | 2017-10-17 10:00 A | 52 | 100% |  |
| 54 |  | [RFS011] Alterar Pessoa | 0.5d | 2017-10-18 09:00 A | 2017-10-18 14:00 A | 53 | 100% |  |
| 55 |  | [RFS012] Alterar Empresa | 0.38d | 2017-10-18 09:00 A | 2017-10-18 15:00 A | 54 | 100% |  |
| 56 |  | [RFS015] Remover Pessoa | 0.25d | 2017-10-19 09:00 A | 2017-10-19 11:00 A | 55 | 100% |  |
| 57 |  | [RFS016] Remover Empresa | 0.12d | 2017-10-19 09:00 A | 2017-10-19 10:00 A | 56 | 100% |  |
| 58 | 1.4.2.2 | **Teste** | 0.75d | 2017-10-20 09:00 A | 2017-10-20 16:00 |  | 100% |  |
| 59 |  | Teste e Validação do Release 1 | 0.25d | 2017-10-20 09:00 A | 2017-10-20 11:00 A | 57 | 100% | finish no earlier than 2017-10-09 18:00 |
| 60 | 1.4.2.3 | **Release 2** | 5d | 2017-10-27 09:00 A | 2017-11-02 18:00 |  | 100% |  |
| 61 |  | [RFS003] Cadastrar Currículo | 0.62d | 2017-10-27 09:00 A | 2017-10-27 15:00 A | 59 | 100% | start no earlier than 2017-10-27 09:00 |
| 62 |  | [RFS004] Cadastrar Habilidades | 0.25d | 2017-10-30 09:00 A | 2017-10-30 11:00 A | 61 | 100% |  |
| 63 |  | [RFS013] Alterar Currículo | 0.12d | 2017-10-30 14:00 A | 2017-10-30 15:00 A | 62 | 100% |  |
| 64 |  | [RFS007] Consultar Currículo | 0.25d? | 2017-10-31 14:00 A | 2017-10-31 16:00 A | 63 | 100% |  |
| 65 |  | ? | 0.62d? | 2017-11-01 09:00 A | 2017-11-01 15:00 A | 64 | 100% |  |
| 66 |  | [RFS017] Remover Currículo | 0.38d? | 2017-11-01 14:00 A | 2017-11-01 17:00 A | 65 | 100% | finish no earlier than 2017-11-01 18:00 |
| 67 |  | [RFS019] Controlar Currículo dos Candidatos | 0.25d? | 2017-11-01 09:00 A | 2017-11-01 11:00 A | 66 | 100% |  |
| 68 | 1.4.2.4 | **Teste** | 1d | 2017-11-09 09:00 A | 2017-11-09 18:00 |  | 100% |  |
| 69 |  | Teste e Validação do Release 2 | 0.25d | 2017-11-09 09:00 A | 2017-11-09 11:00 A | 67 | 100% |  |
| 70 | 1.5.1.11 | **Release 3** | 5d | 2017-11-10 09:00 A | 2017-11-16 18:00 |  | 100% |  |

| ID | WBS | Task | Duration | Start | Finish | Predecessors | Complete | Constraint |
| --- | --- | --- | --- | --- | --- | --- | --- | --- |
| 71 |  | [RFS005] Cadastrar Interesse | 0.5d? | 2017-11-10 09:00 A | 2017-11-10 14:00 A | 69 | 100% |  |
| 72 |  | [RFS006] Consultar Combinações | 0.25d? | 2017-11-10 14:00 A | 2017-11-10 16:00 A | 71 | 100% | finish no earlier than 2017-11-10 18:00 |
| 73 |  | [RFS010] Consultar Interesses | 0.12d? | 2017-11-13 09:00 A | 2017-11-13 10:00 A | 72 | 100% |  |
| 74 |  | [RFS014] Alterar Interesses | 0.06d? | 2017-11-13 14:00 A | 2017-11-13 14:30 A | 73 | 100% |  |
| 75 |  | [RFS018] Remover Interesses | 0.62d? | 2017-11-14 09:00 A | 2017-11-14 15:00 A | 74 | 100% |  |
| 76 |  | ? | 0.25d? | 2017-11-14 14:00 A | 2017-11-14 16:00 A | 75 | 100% |  |
| 77 |  | ? | 0.06d? | 2017-11-15 09:00 A | 2017-11-15 09:30 A | 76 | 100% |  |
| 78 |  | ? | 0.62d? | 2017-11-15 14:00 A | 2017-11-16 10:00 A | 77 | 100% |  |
| 79 | 1.4.2.6 | **Teste** | 1d | 2017-11-15 09:00 A | 2017-11-15 18:00 |  | 100% |  |
| 80 |  | Teste e Validação do Release 3 | 0.06d | 2017-11-15 09:00 A | 2017-11-15 09:30 A |  | 100% |  |
| 81 | 1.4.2.7 | **Release 4** | 5d | 2017-11-17 09:00 A | 2017-11-23 18:00 |  | 100% |  |
| 82 |  | ? | 0.38d? | 2017-11-17 09:00 A | 2017-11-17 12:00 A | 80 | 100% |  |
| 83 |  | ? | 0.06d? | 2017-11-17 14:00 A | 2017-11-17 14:30 A | 82 | 100% |  |
| 84 |  | ? | 0.12d? | 2017-11-20 09:00 A | 2017-11-20 10:00 A | 83 | 100% |  |
| 85 |  | ? | 0.12d? | 2017-11-20 14:00 A | 2017-11-20 15:00 A | 84 | 100% |  |
| 86 |  | ? | 0.75d? | 2017-11-21 09:00 A | 2017-11-21 16:00 A | 85 | 100% |  |
| 87 |  | ? | 0.12d? | 2017-11-21 16:00 A | 2017-11-21 17:00 A | 86 | 100% |  |
| 88 |  | ? | 0.38d? | 2017-11-22 11:00 A | 2017-11-22 15:00 A | 87 | 100% |  |
| 89 |  | ? | 0.12d? | 2017-11-22 15:00 A | 2017-11-22 16:00 A | 88 | 100% |  |
| 90 |  | ? | 0.38d? | 2017-11-23 09:00 A | 2017-11-23 12:00 A | 89 | 100% |  |
| 91 | 1.4.2.8 | **Teste** | 1d | 2017-11-23 09:00 A | 2017-11-23 18:00 |  | 100% |  |
| 92 |  | Teste e Validação do Release 4 | 0.25d | 2017-11-23 09:00 A | 2017-11-23 11:00 A | 89 | 100% |  |
| 93 |  | Aprovação do Documento | 0d | 2017-11-23 11:00 A | 2017-11-23 11:00 A | 92 | 100% | finish no earlier than 2017-10-25 18:00 |

## Version 2 (saved 2018-11-22, file Cronograma - Até Release 3 (imcompleta) - CPI e SPI.mpp)

Note of the change: Merge pull request #7 from fabiogresko/release2

Last finish stays 2019-10-02. Complete tasks 67 → 55.

Removed: 65 ?; 76 ?; 77 ?; 78 ?; 82 ?; 83 ?; 84 ?; 85 ?; 86 ?; 87 ?; 88 ?; 89 ?; 90 ?

Changed:

| ID | Task | Predecessors | Other |
| --- | --- | --- | --- |
| 65 | [RFS017] Remover Currículo | ? → 64 | constraint finish no earlier than 2017-11-01 18:00 → start no earlier than 2017-11-01 14:00; baseline start 2017-11-01 14:00 → 2017-11-01 09:00; baseline finish 2017-11-01 18:00 → 2017-11-01 14:00 |
| 66 | [RFS019] Controlar Currículo dos Candidatos | 65 → none |  |
| 91 | Teste e Validação do Release 4 | ? → none |  |

## Version 3 (saved 2018-11-23, file Cronograma Completo - Release 4.mpp)

Note of the change: Cronogramas 4.0

Last finish stays 2019-10-02. Complete tasks 55 → 62.

Added:

| ID | Task | Duration | Start | Finish | Resources |
| --- | --- | --- | --- | --- | --- |
| 78 | [RFS020] Cadastrar Notícia | 0.5d? | 2017-11-16 09:00 A | 2017-11-16 14:00 A | Fábio |
| 79 | [RFS021] Alterar Notícia | 0.12d? | 2017-11-17 09:00 A | 2017-11-17 10:00 A | Fábio |
| 80 | [RFS022] Remover Notícia | 0.62d? | 2017-11-18 09:00 A | 2017-11-20 14:00 A | Fábio |
| 81 | [RFS023] Consultar Notícia | 0.25d? | 2017-11-19 09:00 A | 2017-11-20 10:00 A | Fábio |
| 82 | [RFS024] Cadastrar Vaga | 0.5d? | 2017-11-19 09:00 A | 2017-11-20 12:00 A | Daniel |
| 83 | [RFS025] Alterar Vaga | 0.12d? | 2017-11-20 09:00 A | 2017-11-20 10:00 A | Daniel |
| 84 | [RFS026] Remover Vaga | 0.62d? | 2017-11-21 09:00 A | 2017-11-21 15:00 A | Daniel |
| 85 | [RFS027] Consultar Vaga | 0.25d? | 2017-11-22 09:00 A | 2017-11-22 11:00 A | Daniel |

Changed:

| ID | Task | Start | Finish | Duration | Predecessors |
| --- | --- | --- | --- | --- | --- |
| 73 | [RFS014] Alterar Interesses |  | 2017-11-13 14:30 A → 2017-11-13 15:00 A | 0.06d? → 0.12d? |  |
| 77 | **Release 4** | 2017-11-17 09:00 A → 2017-11-16 09:00 A (-1d) | 2017-11-23 18:00 → 2017-11-23 09:00 |  |  |
| 87 | Teste e Validação do Release 4 |  |  |  | none → 85 |
